How a schedule from Planner changed from version to version. A marks actual dates.

## Version 1 (saved 2018-09-03)

Note of the change: Relatório 1 de TCC 1

| ID | WBS | Task | Duration | Start | Finish | Predecessors | Complete | Constraint |
| --- | --- | --- | --- | --- | --- | --- | --- | --- |
| 1 | 1 | **Modelo dinâmico do motor** |  | 2018-09-03 | 2018-10-26 |  |  |  |
| 2 |  | Elaborar formulação teórica |  | 2018-09-03 | 2018-09-14 |  |  |  |
| 3 | 1.2 | **Implementação computacional** |  | 2018-09-17 | 2018-09-28 |  |  |  |
| 4 |  | Definir arquitetura |  | 2018-09-17 | 2018-09-21 | 2 |  |  |
| 5 |  | Implementar modelo |  | 2018-09-24 | 2018-09-28 | 4 |  |  |
| 6 | 1.3 | **Testes e estimativa de parâmetros** |  | 2018-10-01 | 2018-10-19 |  |  |  |
| 7 |  | Definir programa de testes |  | 2018-10-01 | 2018-10-05 | 2 |  | start no earlier than 2018-09-30 |
| 8 |  | Preparar testes |  | 2018-10-08 | 2018-10-12 | 7 |  |  |
| 9 |  | Realizar testes |  | 2018-10-15 | 2018-10-19 | 8 |  |  |
| 10 |  | Obter parâmetros do motor através do pós-processamento de dados dos testes |  | 2018-10-22 | 2018-10-26 | 9, 5 |  |  |
| 11 |  | Primeira versão do modelo do motor | 0d | 2018-10-26 | 2018-10-26 | 10 |  |  |
| 12 | 2 | **FADEC** |  | 2018-10-29 | 2019-01-15 |  |  |  |
| 13 |  | Revisão da literatura |  | 2018-10-29 | 2018-11-02 |  |  | start no earlier than 2018-10-28 |
| 14 |  | Definir entradas e saídas do sistema |  | 2018-11-05 | 2018-11-09 | 13 |  |  |
| 15 |  | Elaborar formulação teórica do controlador |  | 2018-11-12 | 2018-11-16 | 14 |  |  |
| 16 | 2.4 | **Implementação em microcontrolador** |  | 2018-11-05 | 2018-11-29 |  |  |  |
| 17 |  | Definir hardware a ser utilizado |  | 2018-11-05 | 2018-11-05 | 13 |  |  |
| 18 |  | Definir estrutura do código |  | 2018-11-19 | 2018-11-22 | 17, 15 |  |  |
| 19 |  | Implementar controlador |  | 2018-11-23 | 2018-11-29 | 18 |  |  |
| 20 | 2.5 | **Testes secos (simulados)** |  | 2018-11-19 | 2019-01-01 |  |  |  |
| 21 |  | Integrar o código do controlador com o modelo do motor |  | 2018-11-30 | 2018-12-06 | 19 |  |  |
| 22 |  | Definir programa de testes |  | 2018-11-19 | 2018-11-20 | 15 | 100% |  |
| 23 |  | Codificar e realizar testes |  | 2018-12-07 | 2018-12-11 | 21, 22 |  |  |
| 24 |  | Obter ganhos do controlador através do pós-processamento de dados dos testes secos |  | 2018-12-12 | 2018-12-18 | 23 |  |  |
| 25 |  | Simular testes molhados (hardware in the loop) |  | 2018-12-26 | 2019-01-01 | 27 |  |  |
| 26 | 2.6 | **Testes molhados (com o motor)** |  | 2018-12-19 | 2019-01-15 |  |  |  |
| 27 |  | Definir programa de testes |  | 2018-12-19 | 2018-12-25 | 24, 22 |  |  |
| 28 |  | Preparar testes |  | 2019-01-02 | 2019-01-08 | 25, 27 |  |  |
| 29 |  | Realizar testes |  | 2019-01-09 | 2019-01-15 | 28 |  |  |
| 30 |  | FADEC pronto e validado | 0d | 2019-01-15 | 2019-01-15 | 29 |  |  |

## Version 2 (saved 2018-11-29)

Note of the change: Update schedule

Last finish 2019-01-15 → 2019-02-26 (+42d).

Removed: 13 Revisão da literatura

Changed:

| ID | Task | Start | Finish | Predecessors |
| --- | --- | --- | --- | --- |
| 1 | **Modelo dinâmico do motor** | 2018-09-03 → 2018-12-17 (+105d) | 2018-10-26 → 2019-01-25 (+91d) |  |
| 2 | Elaborar formulação teórica | 2018-09-03 → 2018-12-17 (+105d) | 2018-09-14 → 2018-12-28 (+105d) |  |
| 3 | **Implementação computacional** | 2018-09-17 → 2018-12-31 (+105d) | 2018-09-28 → 2019-01-11 (+105d) |  |
| 4 | Definir arquitetura | 2018-09-17 → 2018-12-31 (+105d) | 2018-09-21 → 2019-01-04 (+105d) |  |
| 5 | Implementar modelo | 2018-09-24 → 2019-01-07 (+105d) | 2018-09-28 → 2019-01-11 (+105d) |  |
| 6 | **Testes e estimativa de parâmetros** | 2018-10-01 → 2018-12-31 (+91d) | 2018-10-19 → 2019-01-18 (+91d) |  |
| 7 | Definir programa de testes | 2018-10-01 → 2018-12-31 (+91d) | 2018-10-05 → 2019-01-04 (+91d) |  |
| 8 | Preparar testes | 2018-10-08 → 2019-01-07 (+91d) | 2018-10-12 → 2019-01-11 (+91d) |  |
| 9 | Realizar testes | 2018-10-15 → 2019-01-14 (+91d) | 2018-10-19 → 2019-01-18 (+91d) |  |
| 10 | Obter parâmetros do motor através do pós-processamento de dados dos testes | 2018-10-22 → 2019-01-21 (+91d) | 2018-10-26 → 2019-01-25 (+91d) |  |
| 11 | Primeira versão do modelo do motor | 2018-10-26 → 2019-01-25 (+91d) | 2018-10-26 → 2019-01-25 (+91d) |  |
| 12 | **FADEC** | 2018-10-29 → 2018-12-17 (+49d) | 2019-01-15 → 2019-02-26 (+42d) |  |
| 13 | Definir entradas e saídas do sistema | 2018-11-05 → 2018-12-17 (+42d) | 2018-11-09 → 2018-12-21 (+42d) | Revisão da literatura → none |
| 14 | Elaborar formulação teórica do controlador | 2018-11-12 → 2018-12-24 (+42d) | 2018-11-16 → 2018-12-28 (+42d) |  |
| 15 | **Implementação em microcontrolador** | 2018-11-05 → 2018-12-17 (+42d) | 2018-11-29 → 2019-01-10 (+42d) |  |
| 16 | Definir hardware a ser utilizado | 2018-11-05 → 2018-12-17 (+42d) | 2018-11-05 → 2018-12-17 (+42d) | Revisão da literatura → none |
| 17 | Definir estrutura do código | 2018-11-19 → 2018-12-31 (+42d) | 2018-11-22 → 2019-01-03 (+42d) |  |
| 18 | Implementar controlador | 2018-11-23 → 2019-01-04 (+42d) | 2018-11-29 → 2019-01-10 (+42d) |  |
| 19 | **Testes secos (simulados)** | 2018-11-19 → 2018-12-31 (+42d) | 2019-01-01 → 2019-02-12 (+42d) |  |
| 20 | Integrar o código do controlador com o modelo do motor | 2018-11-30 → 2019-01-11 (+42d) | 2018-12-06 → 2019-01-17 (+42d) |  |
| 21 | Definir programa de testes | 2018-11-19 → 2018-12-31 (+42d) | 2018-11-20 → 2019-01-01 (+42d) |  |
| 22 | Codificar e realizar testes | 2018-12-07 → 2019-01-18 (+42d) | 2018-12-11 → 2019-01-22 (+42d) |  |
| 23 | Obter ganhos do controlador através do pós-processamento de dados dos testes secos | 2018-12-12 → 2019-01-23 (+42d) | 2018-12-18 → 2019-01-29 (+42d) |  |
| 24 | Simular testes molhados (hardware in the loop) | 2018-12-26 → 2019-02-06 (+42d) | 2019-01-01 → 2019-02-12 (+42d) |  |
| 25 | **Testes molhados (com o motor)** | 2018-12-19 → 2019-01-30 (+42d) | 2019-01-15 → 2019-02-26 (+42d) |  |
| 26 | Definir programa de testes | 2018-12-19 → 2019-01-30 (+42d) | 2018-12-25 → 2019-02-05 (+42d) |  |
| 27 | Preparar testes | 2019-01-02 → 2019-02-13 (+42d) | 2019-01-08 → 2019-02-19 (+42d) |  |
| 28 | Realizar testes | 2019-01-09 → 2019-02-20 (+42d) | 2019-01-15 → 2019-02-26 (+42d) |  |
| 29 | FADEC pronto e validado | 2019-01-15 → 2019-02-26 (+42d) | 2019-01-15 → 2019-02-26 (+42d) |  |
